# V2_WBS_COCINA

Schedule from MS Project, 2020-05-12 to 2020-08-20, costs in S.

## Calendars

- Standard: Mon-Fri 09:00-13:00, 15:00-19:00; Sat-Sun off.

## Resources

| Resource | Rate |
| --- | --- |
| Orestes Ramirez | 6 |
| Leydi Huallpa | 6 |
| Angela Balaguer | 6 |

## Schedule

| ID | WBS | Task | Duration | Start | Finish | Predecessors | Total slack | Constraint | Resources | Work | Cost |
| --- | --- | --- | --- | --- | --- | --- | --- | --- | --- | --- | --- |
| 1 | 1 | **APP PARA EL SEGUIMIENTO DE MERCADOS MOVIL** | 73d | 2020-05-12 | 2020-08-20 |  | 0d |  |  | 1208h | 7,248 |
| 2 | 1.1 | **FASE INICIO** | 25d | 2020-05-12 | 2020-06-15 |  | 0d |  |  | 328h | 1,968 |
| 3 | 1.1.1 | **Iniciacion** | 2d | 2020-05-12 | 2020-05-13 |  | 0d |  |  | 48h | 288 |
| 4 | 1.1.1.1 | Idea de Proyecto | 2d | 2020-05-12 | 2020-05-13 |  | 0d | start no earlier than 2020-05-12 | Orestes Ramirez; Angela Balaguer; Leydi Huallpa | 48h | 288 |
| 5 | 1.1.2 | **Planificacion** | 3d | 2020-05-14 | 2020-05-18 | 3 | 0d |  |  | 24h | 144 |
| 6 | 1.1.2.1 | EDT WBS | 1d | 2020-05-14 | 2020-05-14 | 4 | 0d |  | Leydi Huallpa | 8h | 48 |
| 7 | 1.1.2.2 | **Normatividad** | 2d | 2020-05-15 | 2020-05-18 |  | 0d |  |  | 16h | 96 |
| 8 | 1.1.2.2.1 | Estandares de Programacion | 2d | 2020-05-15 | 2020-05-18 | 6 | 0d | start no earlier than 2020-05-15 | Angela Balaguer | 16h | 96 |
| 9 | 1.1.3 | **Ejecucion** | 16d | 2020-05-19 | 2020-06-09 | 5 | 0d |  |  | 224h | 1,344 |
| 10 | 1.1.3.1 | Requerimientos | 6d | 2020-05-19 | 2020-05-26 | 8 | 0d |  | Leydi Huallpa | 48h | 288 |
| 11 | 1.1.3.2 | Prototipos | 4d | 2020-05-27 | 2020-06-01 | 10 | 0d |  | Angela Balaguer | 32h | 192 |
| 12 | 1.1.3.3 | **Arquitectura** | 5d | 2020-06-02 | 2020-06-08 |  | 0d |  |  | 120h | 720 |
| 13 | 1.1.3.3.1 | Diagrama de Procesos | 2d | 2020-06-02 | 2020-06-03 | 11 | 4d |  | Orestes Ramirez; Angela Balaguer; Leydi Huallpa | 48h | 288 |
| 14 | 1.1.3.3.2 | Vista de casos de uso | 2d | 2020-06-02 | 2020-06-03 | 11 | 0d |  | Angela Balaguer | 16h | 96 |
| 15 | 1.1.3.3.3 | Vista de despliegue | 1d | 2020-06-04 | 2020-06-04 | 14 | 0d |  | Orestes Ramirez | 8h | 48 |
| 16 | 1.1.3.3.4 | Diagrama de clases | 2d | 2020-06-05 | 2020-06-08 | 15 | 0d |  | Angela Balaguer; Leydi Huallpa; Orestes Ramirez | 48h | 288 |
| 17 | 1.1.3.4 | **Gestion** | 3d | 2020-06-05 | 2020-06-09 |  | 0d |  |  | 24h | 144 |
| 18 | 1.1.3.4.1 | Matriz de riesgos | 1d | 2020-06-09 | 2020-06-09 | 16 | 0d | start no earlier than 2020-06-09 | Angela Balaguer | 8h | 48 |
| 19 | 1.1.3.4.2 | Matriz de trazabilidad | 2d | 2020-06-05 | 2020-06-08 | 15 | 1d |  | Leydi Huallpa | 16h | 96 |
| 20 | 1.1.4 | **Calidad** | 3d | 2020-06-10 | 2020-06-12 | 9 | 0d |  |  | 24h | 144 |
| 21 | 1.1.4.1 | Checklist de Requerimientos | 1d | 2020-06-10 | 2020-06-10 | 19 | 0d |  | Leydi Huallpa | 8h | 48 |
| 22 | 1.1.4.2 | Checklist de Analisis | 1d | 2020-06-11 | 2020-06-11 | 21 | 0d |  | Angela Balaguer | 8h | 48 |
| 23 | 1.1.4.3 | Checklist de Diseño | 1d | 2020-06-12 | 2020-06-12 | 22 | 0d |  | Orestes Ramirez | 8h | 48 |
| 24 | 1.1.5 | **Conformidades** | 1d | 2020-06-15 | 2020-06-15 |  | 0d |  |  | 8h | 48 |
| 25 | 1.1.5.1 | Actas | 1d | 2020-06-15 | 2020-06-15 | 23 | 0d |  | Angela Balaguer | 8h | 48 |

| ID | WBS | Task | Duration | Start | Finish | Predecessors | Total slack | Constraint | Resources | Work | Cost |
| --- | --- | --- | --- | --- | --- | --- | --- | --- | --- | --- | --- |
| 26 | 1.2 | **FASE ELABORACION** | 20d | 2020-06-16 | 2020-07-13 | 2 | 0d |  |  | 208h | 1,248 |
| 27 | 1.2.1 | **Plan de Iteracion 01** | 11d | 2020-06-16 | 2020-06-30 |  | 0d |  |  | 120h | 720 |
| 28 | 1.2.1.1 | Elaboracion de Plan de Iteracion 01 | 1d | 2020-06-16 | 2020-06-16 | 2 | 0d | start no earlier than 2020-06-16 | Angela Balaguer; Leydi Huallpa; Orestes Ramirez | 24h | 144 |
| 29 | 1.2.1.2 | **Analisis y Diseño** | 7d | 2020-06-17 | 2020-06-25 |  | 0d |  |  | 56h | 336 |
| 30 | 1.2.1.2.1 | Diagrama de Casos de Uso | 1d | 2020-06-17 | 2020-06-17 | 28 | 0d |  | Orestes Ramirez | 8h | 48 |
| 31 | 1.2.1.2.2 | Diagrama de Secuencia | 2d | 2020-06-18 | 2020-06-19 | 30 | 0d |  | Leydi Huallpa | 16h | 96 |
| 32 | 1.2.1.2.3 | Elaboracion del MER | 1d | 2020-06-22 | 2020-06-22 | 31 | 0d |  | Angela Balaguer | 8h | 48 |
| 33 | 1.2.1.2.4 | Elaboracion de la Base de datos | 1d | 2020-06-23 | 2020-06-23 | 32 | 0d |  | Angela Balaguer | 8h | 48 |
| 34 | 1.2.1.2.5 | Prototipos del sistema | 2d | 2020-06-24 | 2020-06-25 | 33 | 0d |  | Orestes Ramirez | 16h | 96 |
| 35 | 1.2.1.3 | **Implementacion** | 2d | 2020-06-26 | 2020-06-29 |  | 0d |  |  | 16h | 96 |
| 36 | 1.2.1.3.1 | **Desarrollo de requerimientos Altos** | 2d | 2020-06-26 | 2020-06-29 |  | 0d |  |  | 16h | 96 |
| 37 | 1.2.1.3.1.1 | Modulo Gestionar Unidades | 2d | 2020-06-26 | 2020-06-29 | 34 | 0d |  | Angela Balaguer | 16h | 96 |
| 38 | 1.2.1.4 | **Pruebas** | 1d | 2020-06-30 | 2020-06-30 |  | 0d |  |  | 24h | 144 |
| 39 | 1.2.1.4.1 | Documento de Pruebas | 1d | 2020-06-30 | 2020-06-30 | 37 | 0d |  | Leydi Huallpa; Angela Balaguer; Orestes Ramirez | 24h | 144 |
| 40 | 1.2.2 | **Plan de Iteracion 02** | 9d | 2020-07-01 | 2020-07-13 | 27 | 0d |  |  | 88h | 528 |
| 41 | 1.2.2.1 | Elaboracion de Plan de Iteracion 02 | 1d | 2020-07-01 | 2020-07-01 | 39 | 0d |  | Angela Balaguer; Leydi Huallpa; Orestes Ramirez | 24h | 144 |
| 42 | 1.2.2.2 | **Diseño del sistema** | 5d | 2020-07-02 | 2020-07-08 |  | 0d |  |  | 40h | 240 |
| 43 | 1.2.2.2.1 | Revision de la arquitectura del sistema | 1d | 2020-07-02 | 2020-07-02 | 41 | 0d |  | Orestes Ramirez | 8h | 48 |
| 44 | 1.2.2.2.2 | Elaboracion del MER | 1d | 2020-07-03 | 2020-07-03 | 43 | 0d |  | Angela Balaguer | 8h | 48 |
| 45 | 1.2.2.2.3 | Elaboracion de la Base de datos | 1d | 2020-07-06 | 2020-07-06 | 44 | 0d |  | Leydi Huallpa | 8h | 48 |
| 46 | 1.2.2.2.4 | Prototipos del sistema | 2d | 2020-07-07 | 2020-07-08 | 45 | 0d |  | Orestes Ramirez | 16h | 96 |
| 47 | 1.2.2.3 | **Implementacion** | 1d | 2020-07-09 | 2020-07-09 |  | 0d |  |  | 8h | 48 |
| 48 | 1.2.2.3.1 | **Desarrollo de requerimientos Altos** | 1d | 2020-07-09 | 2020-07-09 |  | 0d |  |  | 8h | 48 |
| 49 | 1.2.2.3.1.1 | Gestionar Personal | 1d | 2020-07-09 | 2020-07-09 | 46 | 0d |  | Angela Balaguer | 8h | 48 |

| ID | WBS | Task | Duration | Start | Finish | Predecessors | Total slack | Constraint | Resources | Work | Cost |
| --- | --- | --- | --- | --- | --- | --- | --- | --- | --- | --- | --- |
| 50 | 1.2.2.4 | **Pruebas** | 2d | 2020-07-10 | 2020-07-13 |  | 0d |  |  | 16h | 96 |
| 51 | 1.2.2.4.1 | Revision de Matriz de Trazabilidad | 1d | 2020-07-10 | 2020-07-10 | 49 | 0d |  | Angela Balaguer | 8h | 48 |
| 52 | 1.2.2.4.2 | Revision de Gestion de Riesgos | 1d | 2020-07-13 | 2020-07-13 | 51 | 0d |  | Leydi Huallpa | 8h | 48 |
| 53 | 1.3 | **FASE CONSTRUCCION** | 24d | 2020-07-14 | 2020-08-14 | 26 | 0d |  |  | 576h | 3,456 |
| 54 | 1.3.1 | **Iteracion 01** | 12d | 2020-07-14 | 2020-07-29 |  | 0d |  |  | 288h | 1,728 |
| 55 | 1.3.1.1 | Elaboracion del plan de iteracion 01 | 12d | 2020-07-14 | 2020-07-29 | 52 | 0d | start no earlier than 2020-07-14 | Angela Balaguer; Leydi Huallpa; Orestes Ramirez | 288h | 1,728 |
| 56 | 1.3.2 | **Iteracion 02** | 12d | 2020-07-30 | 2020-08-14 | 55 | 0d |  |  | 288h | 1,728 |
| 57 | 1.3.2.1 | Elaboracion del plan de iteracion 02 | 12d | 2020-07-30 | 2020-08-14 | 55 | 0d |  | Angela Balaguer; Leydi Huallpa; Orestes Ramirez | 288h | 1,728 |
| 58 | 1.4 | **FASE CIERRE** | 4d | 2020-08-17 | 2020-08-20 | 53 | 0d |  |  | 96h | 576 |
| 59 | 1.4.1 | pruebas de aceptacion | 2d | 2020-08-17 | 2020-08-18 | 57 | 0d |  | Angela Balaguer; Leydi Huallpa; Orestes Ramirez | 48h | 288 |
| 60 | 1.4.2 | manual de usuario | 2d | 2020-08-19 | 2020-08-20 | 59 | 0d |  | Angela Balaguer; Leydi Huallpa; Orestes Ramirez | 48h | 288 |
